task_id,name,batch,source_role,source_effort,observed_verification_status,actual_assignee_resource_id,actual_assignee_name,remaining_effort_hours,capacity_plan_start_date,capacity_plan_finish_date,dependency_only_start_low_day_offset,dependency_only_finish_low_day_offset,dependency_only_start_high_day_offset,dependency_only_finish_high_day_offset
T001,建立单仓库目录与基础README,B1,架构/全栈,1～2人日,PARTIAL_VERIFIED_SCOPE,PERSON-001,邓昀,,,,0,1,0,2
T002,配置Python后端工程,B1,后端,1～2人日,PARTIAL_VERIFIED_SCOPE,PERSON-001,邓昀,,,,1,2,2,4
T003,配置Vue前端工程,B1,前端,1～2人日,PARTIAL_VERIFIED_SCOPE,PERSON-001,邓昀,,,,1,2,2,4
T010,建立架构决策记录和变更模板,B1,架构,1～2人日,PARTIAL_VERIFIED_SCOPE,PERSON-001,邓昀,,,,1,2,2,4
T004,建立本地容器开发环境,B1,DevOps,2人日,PARTIAL_VERIFIED_SCOPE,PERSON-001,邓昀,,,,2,4,4,6
T005,配置代码格式化与静态检查,B1,全栈,1～2人日,PARTIAL_VERIFIED_SCOPE,PERSON-001,邓昀,,,,2,3,4,6
T008,建立统一日志与请求追踪,B1,后端,1～2人日,PARTIAL_VERIFIED_SCOPE,PERSON-001,邓昀,,,,2,3,4,6
T009,建立统一异常与错误码框架,B1,后端,1～2人日,PARTIAL_VERIFIED_SCOPE,PERSON-001,邓昀,,,,2,3,4,6
T011,设计用户角色与数据范围模型,B2,后端/安全,1～2人日,PARTIAL_VERIFIED_SCOPE,PERSON-001,邓昀,,,,2,3,4,6
T006,建立基础持续集成流水线,B1,DevOps,2人日,PARTIAL_VERIFIED_SCOPE,PERSON-001,邓昀,,,,4,6,6,8
T007,建立统一配置和密钥规范,B1,后端/DevOps,1～2人日,PARTIAL_VERIFIED_SCOPE,PERSON-001,邓昀,,,,4,5,6,8
T012,实现用户角色数据库模型,B2,后端,1～2人日,PARTIAL_VERIFIED_SCOPE,PERSON-002,徐昌胜,,,,3,4,6,8
T019,设计内容与媒体资产模型,B2,数据/后端,1～2人日,NO_FULL_TASK_VERIFICATION_EVIDENCE,,,,,,3,4,6,8
T013,实现认证与令牌校验,B2,后端/安全,1～2人日,PARTIAL_VERIFIED_SCOPE,PERSON-002,徐昌胜,,,,4,5,8,10
T017,实现操作审计事件模型,B2,后端,1～2人日,PARTIAL_VERIFIED_SCOPE,,,,,,4,5,8,10
T020,实现内容与媒体资产表,B2,后端,1～2人日,PARTIAL_VERIFIED_SCOPE,,,,,,4,5,8,10
T117,建立应用安全自动化扫描,B7,安全/DevOps,1～2人日,PARTIAL_VERIFIED_SCOPE,,,,,,6,7,8,10
T014,实现接口级权限控制,B2,后端/安全,1～2人日,PARTIAL_VERIFIED_SCOPE,PERSON-002,徐昌胜,,,,5,6,10,12
T031,设计分析任务与节点执行模型,B2,架构/后端,1～2人日,PARTIAL_VERIFIED_SCOPE,,,,,,5,6,10,12
T015,实现数据范围访问控制,B2,后端/安全,2人日,PARTIAL_VERIFIED_SCOPE,PERSON-002,徐昌胜,,,,6,8,12,14
T016,实现高风险操作二次确认,B2,前后端/安全,1～2人日,PARTIAL_VERIFIED_SCOPE,PERSON-002,徐昌胜,,,,6,7,12,14
T021,实现数据来源授权登记,B2,前后端,1～2人日,PARTIAL_VERIFIED_SCOPE,,,,,,6,7,12,14
T022,实现分片上传初始化,B2,后端,1～2人日,PARTIAL_VERIFIED_SCOPE,,,,,,6,7,12,14
T032,实现任务及节点数据库模型,B2,后端,1～2人日,PARTIAL_VERIFIED_SCOPE,,,,,,6,7,12,14
T018,开发审计查询页面与接口,B2,前后端,1～2人日,PARTIAL_VERIFIED_SCOPE,,,,,,8,9,14,16
T023,实现分片接收与校验,B2,后端,1～2人日,PARTIAL_VERIFIED_SCOPE,,,,,,7,8,14,16
T029,实现第三方接入适配器协议,B2,后端,1～2人日,NO_FULL_TASK_VERIFICATION_EVIDENCE,,,,,,7,8,14,16
T033,实现任务状态机,B2,后端,1～2人日,PARTIAL_VERIFIED_SCOPE,,,,,,7,8,14,16
T024,实现分片合并与完整哈希,B2,后端,1～2人日,PARTIAL_VERIFIED_SCOPE,,,,,,8,9,16,18
T034,实现任务创建接口,B2,后端,1～2人日,NO_FULL_TASK_VERIFICATION_EVIDENCE,,,,,,8,9,16,18
T025,实现MinIO对象存储适配器,B2,后端,1～2人日,PARTIAL_VERIFIED_SCOPE,,,,,,9,10,18,20
T026,实现媒体格式探测与安全校验,B2,后端/安全,1～2人日,PARTIAL_VERIFIED_SCOPE,,,,,,9,10,18,20
T027,实现SHA-256完全重复检测,B2,后端,1～2人日,PARTIAL_VERIFIED_SCOPE,,,,,,9,10,18,20
T035,实现任务查询和进度接口,B2,后端,1～2人日,PARTIAL_VERIFIED_SCOPE,,,,,,9,10,18,20
T036,实现异步队列与优先级,B2,后端/DevOps,2人日,PARTIAL_VERIFIED_SCOPE,,,,,,9,11,18,20
T028,实现批量清单导入,B2,后端,1～2人日,PARTIAL_VERIFIED_SCOPE,,,,,,10,11,20,22
T030,开发媒体资产管理页面,B2,前端,1～2人日,PARTIAL_VERIFIED_SCOPE,,,,,,10,11,20,22
T037,实现DAG任务编排器,B2,后端,3人日,NO_FULL_TASK_VERIFICATION_EVIDENCE,,,,,,11,14,20,23
T038,实现节点级重试与检查点,B2,后端,2人日,PARTIAL_VERIFIED_SCOPE,,,,,,14,16,23,25
T039,实现任务取消和退回重算,B2,后端,1～2人日,PARTIAL_VERIFIED_SCOPE,,,,,,14,15,23,25
T041,实现图片元数据解析,B3,后端/算法,1～2人日,PARTIAL_VERIFIED_SCOPE,,,,,,14,15,23,25
T042,实现视频ffprobe解析,B3,后端/算法,1～2人日,PARTIAL_VERIFIED_SCOPE,,,,,,14,15,23,25
T051,定义统一模型输入输出契约,B3,算法平台,1～2人日,PARTIAL_VERIFIED_SCOPE,,,,,,14,15,23,25
T118,实施上传与接口安全测试,B7,安全/测试,4人日,PARTIAL_VERIFIED_SCOPE,,,,,,11,15,22,26
T040,开发任务监控页面,B2,前端,1～2人日,PARTIAL_VERIFIED_SCOPE,,,,,,15,16,25,27
T043,实现标准化媒体副本生成,B3,后端/算法,1～2人日,PARTIAL_VERIFIED_SCOPE,,,,,,15,16,25,27
T052,实现模型注册表,B3,后端/算法平台,1～2人日,NO_FULL_TASK_VERIFICATION_EVIDENCE,,,,,,15,16,25,27
T079,实现图片感知哈希特征,B4,算法,1～2人日,NO_FULL_TASK_VERIFICATION_EVIDENCE,,,,,,15,16,25,27
T083,实现局部特征提取与匹配,B4,算法,1～2人日,NO_FULL_TASK_VERIFICATION_EVIDENCE,,,,,,15,16,25,27
T100,实现统一证据对象模型,B3,后端,1～2人日,NO_FULL_TASK_VERIFICATION_EVIDENCE,,,,,,15,16,25,27
T044,实现镜头边界检测,B3,算法,1～2人日,NO_FULL_TASK_VERIFICATION_EVIDENCE,,,,,,16,17,27,29
T045,实现固定间隔抽帧,B3,算法,1～2人日,PARTIAL_VERIFIED_SCOPE,,,,,,16,17,27,29
T047,实现音轨与字幕提取,B3,算法,1～2人日,PARTIAL_VERIFIED_SCOPE,,,,,,16,17,27,29
T053,实现统一推理网关,B3,算法平台,1～2人日,PARTIAL_VERIFIED_SCOPE,,,,,,16,17,27,29
T058,实现模型评测记录管理,B3,后端/算法平台,1～2人日,NO_FULL_TASK_VERIFICATION_EVIDENCE,,,,,,16,17,27,29
T061,定义风险标签和版本管理,B4,业务/后端,1～2人日,NO_FULL_TASK_VERIFICATION_EVIDENCE,,,,,,16,17,27,29
T071,实现图片取证基础特征,B4,算法,1～2人日,NO_FULL_TASK_VERIFICATION_EVIDENCE,,,,,,16,17,27,29
T046,实现镜头代表帧选择,B3,算法,1～2人日,NO_FULL_TASK_VERIFICATION_EVIDENCE,,,,,,17,18,29,31
T049,接入ASR并建立时间片段,B3,算法,1～2人日,NO_FULL_TASK_VERIFICATION_EVIDENCE,,,,,,17,18,29,31
T054,实现HTTP与本地Mock适配器,B3,算法平台,1～2人日,NO_FULL_TASK_VERIFICATION_EVIDENCE,,,,,,17,18,29,31
T055,实现推理批处理与GPU队列,B3,算法平台,3人日,NO_FULL_TASK_VERIFICATION_EVIDENCE,,,,,,17,20,29,32
T056,实现模型健康检查与熔断,B3,算法平台,1～2人日,NO_FULL_TASK_VERIFICATION_EVIDENCE,,,,,,17,18,29,31
T057,实现模型灰度发布,B3,算法平台,1～2人日,NO_FULL_TASK_VERIFICATION_EVIDENCE,,,,,,17,18,29,31
T059,实现输入输出漂移监测,B3,算法平台,1～2人日,NO_FULL_TASK_VERIFICATION_EVIDENCE,,,,,,17,18,29,31
T062,接入图片多标签分类模型,B4,算法,1～2人日,NO_FULL_TASK_VERIFICATION_EVIDENCE,,,,,,17,18,29,31
T065,接入音频事件识别模型,B4,算法,1～2人日,NO_FULL_TASK_VERIFICATION_EVIDENCE,,,,,,17,18,29,31
T072,接入图片篡改区域模型,B4,算法,1～2人日,NO_FULL_TASK_VERIFICATION_EVIDENCE,,,,,,17,18,29,31
T074,实现视频时间结构异常检测,B4,算法,3人日,NO_FULL_TASK_VERIFICATION_EVIDENCE,,,,,,17,20,29,32
T109,建立标注规范与标签质检工具,PARALLEL_DATA_TRAINING,数据/算法,1～2人日,NO_FULL_TASK_VERIFICATION_EVIDENCE,,,,,,17,18,29,31
T125,建立算法实验公共框架,PARALLEL_DATA_TRAINING,算法平台,3人日,NO_FULL_TASK_VERIFICATION_EVIDENCE,,,,,,17,20,29,32
T048,接入OCR并建立时间片段,B3,算法,1～2人日,NO_FULL_TASK_VERIFICATION_EVIDENCE,,,,,,18,19,31,33
T060,开发模型运维页面,B3,前端,1～2人日,NO_FULL_TASK_VERIFICATION_EVIDENCE,,,,,,18,19,31,33
T063,接入敏感目标检测模型,B4,算法,1～2人日,NO_FULL_TASK_VERIFICATION_EVIDENCE,,,,,,18,19,31,33
T073,实现复制粘贴与局部生成分类,B4,算法,1～2人日,NO_FULL_TASK_VERIFICATION_EVIDENCE,,,,,,18,19,31,33
T080,实现视觉与复制检测向量生成,B4,算法,1～2人日,NO_FULL_TASK_VERIFICATION_EVIDENCE,,,,,,18,19,31,33
T110,实现原始素材分组划分,PARALLEL_DATA_TRAINING,数据/算法,1～2人日,NO_FULL_TASK_VERIFICATION_EVIDENCE,,,,,,18,19,31,33
T050,实现媒体统一时间轴服务,B3,后端,1～2人日,NO_FULL_TASK_VERIFICATION_EVIDENCE,,,,,,19,20,33,35
T081,建立Milvus索引与版本管理,B4,数据/算法平台,3人日,PARTIAL_VERIFIED_SCOPE,,,,,,19,22,33,36
T098,实现结构化主张抽取服务,B5,大模型/后端,1～2人日,NO_FULL_TASK_VERIFICATION_EVIDENCE,,,,,,19,20,33,35
T111,实现可控编辑数据增强流水线,PARALLEL_DATA_TRAINING,算法,4人日,NO_FULL_TASK_VERIFICATION_EVIDENCE,,,,,,19,23,33,37
T126,建立训练数据版本与数据卡,PARALLEL_DATA_TRAINING,数据/算法,3人日,NO_FULL_TASK_VERIFICATION_EVIDENCE,,,,,,20,23,33,36
T064,接入视频行为识别模型,B4,算法,1～2人日,NO_FULL_TASK_VERIFICATION_EVIDENCE,,,,,,20,21,35,37
T075,实现视频空间篡改跟踪,B4,算法,3人日,NO_FULL_TASK_VERIFICATION_EVIDENCE,,,,,,20,23,35,38
T076,接入深度伪造与音画同步检测,B4,算法,1～2人日,NO_FULL_TASK_VERIFICATION_EVIDENCE,,,,,,20,21,35,37
T082,实现图片多路候选召回,B4,算法/后端,1～2人日,NO_FULL_TASK_VERIFICATION_EVIDENCE,,,,,,22,23,36,38
T099,实现权威证据检索与关系判断,B5,大模型/检索,4人日,NO_FULL_TASK_VERIFICATION_EVIDENCE,,,,,,20,24,35,39
T120,实现监控指标与告警,B7,DevOps,3人日,PARTIAL_VERIFIED_SCOPE,,,,,,22,25,36,39
T127,冻结公安业务独立测试集,PARALLEL_DATA_TRAINING,业务/数据,1～2人日,NO_FULL_TASK_VERIFICATION_EVIDENCE,,,,,,23,24,36,38
T128,建立算法基线结果台账,PARALLEL_DATA_TRAINING,算法,3人日,NO_FULL_TASK_VERIFICATION_EVIDENCE,,,,,,23,26,36,39
T129,开展图片多标签风险数据分析,PARALLEL_DATA_TRAINING,算法/数据,1～2人日,NO_FULL_TASK_VERIFICATION_EVIDENCE,,,,,,23,24,36,38
T134,构建视频行为训练片段与时间边界,PARALLEL_DATA_TRAINING,数据/算法,3人日,NO_FULL_TASK_VERIFICATION_EVIDENCE,,,,,,23,26,36,39
T142,构建图片篡改成组训练集,PARALLEL_DATA_TRAINING,数据/算法,4人日,NO_FULL_TASK_VERIFICATION_EVIDENCE,,,,,,23,27,37,41
T147,构建视频篡改与深伪训练集,PARALLEL_DATA_TRAINING,数据/算法,5人日,NO_FULL_TASK_VERIFICATION_EVIDENCE,,,,,,23,28,37,42
T166,构建主张抽取监督微调数据,PARALLEL_DATA_TRAINING,数据/大模型,4人日,NO_FULL_TASK_VERIFICATION_EVIDENCE,,,,,,23,27,36,40
T066,实现多模态时间对齐,B4,算法,1～2人日,NO_FULL_TASK_VERIFICATION_EVIDENCE,,,,,,21,22,37,39
T077,实现篡改多证据融合,B4,算法,1～2人日,NO_FULL_TASK_VERIFICATION_EVIDENCE,,,,,,23,24,38,40
T084,实现RANSAC几何验证,B4,算法,1～2人日,NO_FULL_TASK_VERIFICATION_EVIDENCE,,,,,,23,24,38,40
T086,实现视频帧检索候选聚合,B4,算法,1～2人日,NO_FULL_TASK_VERIFICATION_EVIDENCE,,,,,,23,24,38,40
T130,训练图片多标签风险基线模型,PARALLEL_DATA_TRAINING,算法,4人日,NO_FULL_TASK_VERIFICATION_EVIDENCE,,,,,,26,30,39,43
T132,训练敏感目标检测模型,PARALLEL_DATA_TRAINING,算法,5人日,NO_FULL_TASK_VERIFICATION_EVIDENCE,,,,,,26,31,39,44
T135,微调视频行为识别模型,PARALLEL_DATA_TRAINING,算法,5人日,NO_FULL_TASK_VERIFICATION_EVIDENCE,,,,,,26,31,39,44
T137,微调音频事件识别模型,PARALLEL_DATA_TRAINING,算法,4人日,NO_FULL_TASK_VERIFICATION_EVIDENCE,,,,,,26,30,39,43
T143,训练图片噪声残差分支,PARALLEL_DATA_TRAINING,算法,4人日,NO_FULL_TASK_VERIFICATION_EVIDENCE,,,,,,27,31,41,45
T144,训练RGB语义与边界分支,PARALLEL_DATA_TRAINING,算法,5人日,NO_FULL_TASK_VERIFICATION_EVIDENCE,,,,,,27,32,41,46
T148,训练视频时间篡改检测模型,PARALLEL_DATA_TRAINING,算法,5人日,NO_FULL_TASK_VERIFICATION_EVIDENCE,,,,,,28,33,42,47
T150,微调人脸深度伪造检测模型,PARALLEL_DATA_TRAINING,算法,5人日,NO_FULL_TASK_VERIFICATION_EVIDENCE,,,,,,28,33,42,47
T151,训练口型语音同步检测模型,PARALLEL_DATA_TRAINING,算法,4人日,NO_FULL_TASK_VERIFICATION_EVIDENCE,,,,,,28,32,42,46
T167,微调主张抽取模型,PARALLEL_DATA_TRAINING,大模型,5人日,NO_FULL_TASK_VERIFICATION_EVIDENCE,,,,,,27,32,40,45
T168,构建并训练证据关系判断模型,PARALLEL_DATA_TRAINING,数据/大模型,6人日,NO_FULL_TASK_VERIFICATION_EVIDENCE,,,,,,27,33,40,46
T067,实现跨模态矛盾检测,B4,算法,3人日,NO_FULL_TASK_VERIFICATION_EVIDENCE,,,,,,22,25,39,42
T078,开发篡改取证界面,B4,前端,1～2人日,NO_FULL_TASK_VERIFICATION_EVIDENCE,,,,,,24,25,40,42
T085,实现图片局部区域检索,B4,前后端/算法,1～2人日,NO_FULL_TASK_VERIFICATION_EVIDENCE,,,,,,24,25,40,42
T087,实现视频相似度矩阵构建,B4,算法,1～2人日,NO_FULL_TASK_VERIFICATION_EVIDENCE,,,,,,24,25,40,42
T114,实现篡改模型评测流水线,PARALLEL_DATA_TRAINING,算法,4人日,NO_FULL_TASK_VERIFICATION_EVIDENCE,,,,,,24,28,40,44
T131,优化风险类别不平衡与长尾召回,PARALLEL_DATA_TRAINING,算法,4人日,NO_FULL_TASK_VERIFICATION_EVIDENCE,,,,,,30,34,43,47
T133,开展小目标低清目标专项优化,PARALLEL_DATA_TRAINING,算法,4人日,NO_FULL_TASK_VERIFICATION_EVIDENCE,,,,,,31,35,44,48
T136,训练视频事件时间定位模型,PARALLEL_DATA_TRAINING,算法,5人日,NO_FULL_TASK_VERIFICATION_EVIDENCE,,,,,,31,36,44,49
T138,构建跨模态一致与矛盾训练集,PARALLEL_DATA_TRAINING,数据/算法,4人日,NO_FULL_TASK_VERIFICATION_EVIDENCE,,,,,,23,27,39,43
T145,训练图片多分支融合篡改模型,PARALLEL_DATA_TRAINING,算法,5人日,NO_FULL_TASK_VERIFICATION_EVIDENCE,,,,,,32,37,46,51
T068,实现综合风险融合与校准,B4,算法,3人日,NO_FULL_TASK_VERIFICATION_EVIDENCE,,,,,,25,28,42,45
T088,实现局部DTW与倒放对齐,B4,算法,4人日,NO_FULL_TASK_VERIFICATION_EVIDENCE,,,,,,25,29,42,46
T139,训练跨模态矛盾检测模型,PARALLEL_DATA_TRAINING,算法,5人日,NO_FULL_TASK_VERIFICATION_EVIDENCE,,,,,,27,32,43,48
T146,训练图片篡改类型分类模型,PARALLEL_DATA_TRAINING,算法,4人日,NO_FULL_TASK_VERIFICATION_EVIDENCE,,,,,,37,41,51,55
T149,训练视频空间篡改检测与跟踪模型,PARALLEL_DATA_TRAINING,算法,5人日,NO_FULL_TASK_VERIFICATION_EVIDENCE,,,,,,37,42,51,56
T069,实现风险转人工规则,B4,后端/业务,1～2人日,NO_FULL_TASK_VERIFICATION_EVIDENCE,,,,,,28,29,45,47
T089,实现多源拼接来源映射,B4,算法/后端,4人日,NO_FULL_TASK_VERIFICATION_EVIDENCE,,,,,,29,33,46,50
T113,实现风险模型训练与评测流水线,PARALLEL_DATA_TRAINING,算法,5人日,NO_FULL_TASK_VERIFICATION_EVIDENCE,,,,,,28,33,45,50
T140,训练多模态风险融合模型,PARALLEL_DATA_TRAINING,算法,5人日,NO_FULL_TASK_VERIFICATION_EVIDENCE,,,,,,36,41,49,54
T152,实施跨压缩跨生成器泛化训练,PARALLEL_DATA_TRAINING,算法,5人日,NO_FULL_TASK_VERIFICATION_EVIDENCE,,,,,,42,47,56,61
T070,开发风险识别研判界面,B4,前端,1～2人日,NO_FULL_TASK_VERIFICATION_EVIDENCE,,,,,,29,30,47,49
T090,实现高可信同源内容聚类,B5,算法/后端,1～2人日,NO_FULL_TASK_VERIFICATION_EVIDENCE,,,,,,33,34,50,52
T101,实现风险与取证证据卡片接口,B6,后端,1～2人日,PARTIAL_VERIFIED_SCOPE,,,,,,33,34,50,52
T112,建立难负样本挖掘流程,PARALLEL_DATA_TRAINING,算法/数据,1～2人日,NO_FULL_TASK_VERIFICATION_EVIDENCE,,,,,,33,34,50,52
T115,实现同源与片段检索评测流水线,PARALLEL_DATA_TRAINING,算法,4人日,NO_FULL_TASK_VERIFICATION_EVIDENCE,,,,,,33,37,50,54
T141,实施风险概率校准和业务阈值优化,PARALLEL_DATA_TRAINING,算法/业务,3人日,NO_FULL_TASK_VERIFICATION_EVIDENCE,,,,,,41,44,54,57
T153,实施篡改模型校准与不确定性估计,PARALLEL_DATA_TRAINING,算法,3人日,NO_FULL_TASK_VERIFICATION_EVIDENCE,,,,,,47,50,61,64
T091,实现首发排序特征工程,B5,算法,1～2人日,NO_FULL_TASK_VERIFICATION_EVIDENCE,,,,,,34,35,52,54
T094,设计传播图谱数据模型,B5,数据/架构,1～2人日,NO_FULL_TASK_VERIFICATION_EVIDENCE,,,,,,34,35,52,54
T102,实现人工复核工作流,B6,后端,3人日,PARTIAL_VERIFIED_SCOPE,,,,,,34,37,52,55
T106,实现证据约束核查摘要,B6,大模型/后端,1～2人日,NO_FULL_TASK_VERIFICATION_EVIDENCE,,,,,,34,35,52,54
T154,构建图片复制检测对比学习样本,PARALLEL_DATA_TRAINING,数据/算法,4人日,NO_FULL_TASK_VERIFICATION_EVIDENCE,,,,,,34,38,52,56
T164,构建首发排序训练内容簇,PARALLEL_DATA_TRAINING,数据/业务,4人日,NO_FULL_TASK_VERIFICATION_EVIDENCE,,,,,,34,38,52,56
T092,训练和注册首发排序模型,B5,算法,5人日,NO_FULL_TASK_VERIFICATION_EVIDENCE,,,,,,38,43,56,61
T095,实现传播图谱写入与查询,B5,后端,1～2人日,NO_FULL_TASK_VERIFICATION_EVIDENCE,,,,,,35,36,54,56
T104,实现证据固化与完整性校验,B6,后端/安全,3人日,NO_FULL_TASK_VERIFICATION_EVIDENCE,,,,,,37,40,55,58
T108,实现样本纠错与回流审批,B6,前后端/算法平台,1～2人日,PARTIAL_VERIFIED_SCOPE,,,,,,37,38,55,57
T119,实施大模型安全测试,B7,安全/大模型,4人日,NO_FULL_TASK_VERIFICATION_EVIDENCE,,,,,,35,39,54,58
T155,训练图片复制检测向量模型,PARALLEL_DATA_TRAINING,算法,5人日,NO_FULL_TASK_VERIFICATION_EVIDENCE,,,,,,38,43,56,61
T158,构建视频帧复制检测训练集,PARALLEL_DATA_TRAINING,数据/算法,4人日,NO_FULL_TASK_VERIFICATION_EVIDENCE,,,,,,38,42,56,60
T169,研发无证据生成检测与句级引用校验,PARALLEL_DATA_TRAINING,大模型/安全,5人日,NO_FULL_TASK_VERIFICATION_EVIDENCE,,,,,,35,40,54,59
T093,实现首发候选查询服务,B5,后端,1～2人日,PARTIAL_VERIFIED_SCOPE,,,,,,43,44,61,63
T096,实现隐式传播关系推断,B5,算法,1～2人日,NO_FULL_TASK_VERIFICATION_EVIDENCE,,,,,,36,37,56,58
T105,实现可信时间与签名适配层,B6,安全/后端,1～2人日,NO_FULL_TASK_VERIFICATION_EVIDENCE,,,,,,40,41,58,60
T107,实现核查报告生成,B6,后端,3人日,PARTIAL_VERIFIED_SCOPE,,,,,,40,43,58,61
T116,实现首发和大模型核查评测,PARALLEL_DATA_TRAINING,算法/大模型,4人日,NO_FULL_TASK_VERIFICATION_EVIDENCE,,,,,,43,47,61,65
T121,实现备份恢复与灾备演练,B7,DevOps/数据,4人日,PARTIAL_VERIFIED_SCOPE,,,,,,40,44,58,62
T156,实施难负样本迭代训练,PARALLEL_DATA_TRAINING,算法/数据,4人日,NO_FULL_TASK_VERIFICATION_EVIDENCE,,,,,,43,47,61,65
T157,优化复制向量与索引联合参数,PARALLEL_DATA_TRAINING,算法平台,4人日,NO_FULL_TASK_VERIFICATION_EVIDENCE,,,,,,43,47,61,65
T159,训练视频关键帧复制检测模型,PARALLEL_DATA_TRAINING,算法,5人日,NO_FULL_TASK_VERIFICATION_EVIDENCE,,,,,,42,47,60,65
T165,开展首发排序模型消融与校准,PARALLEL_DATA_TRAINING,算法,4人日,NO_FULL_TASK_VERIFICATION_EVIDENCE,,,,,,43,47,61,65
T097,开发传播时间线和图谱界面,B5,前端,1～2人日,NO_FULL_TASK_VERIFICATION_EVIDENCE,,,,,,44,45,63,65
T122,执行20并发验收性能测试,B7,测试/DevOps,4人日,NO_FULL_TASK_VERIFICATION_EVIDENCE,,,,,,43,47,61,65
T160,优化视频帧相似度模型,PARALLEL_DATA_TRAINING,算法,4人日,NO_FULL_TASK_VERIFICATION_EVIDENCE,,,,,,47,51,65,69
T103,开发人工复核工作台,B6,前端,4人日,PARTIAL_VERIFIED_SCOPE,,,,,,45,49,65,69
T123,执行100并发容量与长稳测试,B7,测试/DevOps,5人日,NO_FULL_TASK_VERIFICATION_EVIDENCE,,,,,,47,52,65,70
T161,训练学习型视频片段定位模型,PARALLEL_DATA_TRAINING,算法,6人日,NO_FULL_TASK_VERIFICATION_EVIDENCE,,,,,,51,57,69,75
T162,训练多源拼接边界检测模型,PARALLEL_DATA_TRAINING,算法,5人日,NO_FULL_TASK_VERIFICATION_EVIDENCE,,,,,,57,62,75,80
T163,实施视频检索分数校准,PARALLEL_DATA_TRAINING,算法,3人日,NO_FULL_TASK_VERIFICATION_EVIDENCE,,,,,,62,65,80,83
T170,实施模型压缩导出与发布候选冻结,PARALLEL_DATA_TRAINING,算法平台,6人日,NO_FULL_TASK_VERIFICATION_EVIDENCE,,,,,,65,71,83,89
T124,完成三类业务场景验收,B7,业务/测试,5人日,NO_FULL_TASK_VERIFICATION_EVIDENCE,,,,,,71,76,89,94
